# Ventolin HFA

Schedule from MS Project, 2008-05-23 to 2008-09-23.
GlaxoSmithKline

## Calendars

- Standard: Mon-Fri 08:00-12:00, 13:00-17:00; Sat-Sun off.

## Resources

| Resource | Group |
| --- | --- |
| Dan Kornegay | IT |
| Kat Spencer | IT Quality |
| Kit Young | IT |
| James Becker | IT - LINKS |
| Bob Heckel | IT - LINKS |
| Brad Flynn | MDI |
| Carol Files | IT |
| Scott Thomas | QACV |
| TBA |  |
| Sue Grogan | IT - LINKS |
| Bob |  |
| Dal |  |
| Sonya |  |
| Scott |  |
| Sonay |  |
| Brad |  |
| Kit |  |
| Jim |  |
| scot |  |
| TBD |  |
| v |  |

## Schedule

| ID | WBS | Task | Duration | Start | Finish | Predecessors | Total slack | Free slack | Constraint | Resources | Work |
| --- | --- | --- | --- | --- | --- | --- | --- | --- | --- | --- | --- |
| 1 | 1 | Code | 21d | 2008-05-23 | 2008-06-20 |  | 0d |  | finish no earlier than 2008-06-20 | Bob | 168h |
| 2 | 2 | Validation Analysis | 5d | 2008-06-23 | 2008-06-27 | 1 | 0d |  | start no earlier than 2008-06-23 | Sonya; Dal; Bob; Scott | 160h |
| 3 | 3 | **BR** | 4d | 2008-06-30 | 2008-07-03 |  | 0d |  |  |  | 40h |
| 4 | 3.1 | Develop | 1d | 2008-06-30 | 2008-06-30 | 2 | 0d |  | start no earlier than 2007-09-12 | Scott; Bob | 16h |
| 5 | 3.2 | Review | 1d | 2008-07-01 | 2008-07-01 | 4 | 61d | 0d | start no earlier than 2007-09-12 | Sonya | 8h |
| 6 | 3.3 | Approve | 2d | 2008-07-02 | 2008-07-03 | 5 | 61d |  | start no earlier than 2007-09-12 | Dal | 16h |
| 7 | 4 | **SR** | 5d | 2008-07-01 | 2008-07-07 |  | 0d |  |  |  | 56h |
| 8 | 4.1 | Develop | 1d | 2008-07-01 | 2008-07-01 | 4 | 0d |  | start no earlier than 2007-09-12 | Bob | 8h |
| 9 | 4.2 | Review | 2d | 2008-07-02 | 2008-07-03 | 8 | 59d | 0d | start no earlier than 2007-09-12 | Sonya | 16h |
| 10 | 4.3 | Approve | 2d | 2008-07-04 | 2008-07-07 | 9 | 59d |  | start no earlier than 2007-09-12 | Dal; Scott | 32h |
| 11 | 5 | **SDS** | 5d | 2008-07-02 | 2008-07-08 |  | 0d |  |  |  | 56h |
| 12 | 5.1 | Develop | 1d | 2008-07-02 | 2008-07-02 | 8 | 0d |  | start no earlier than 2007-09-12 | Bob | 8h |
| 13 | 5.2 | Review | 2d | 2008-07-03 | 2008-07-04 | 12 | 43d | 0d | start no earlier than 2007-09-12 | Sonya | 16h |
| 14 | 5.3 | Approve | 2d | 2008-07-07 | 2008-07-08 | 13 | 43d | 0d | start no earlier than 2007-09-12 | Dal; Scott | 32h |
| 15 | 7 | **Test Case Development** | 24d | 2008-07-03 | 2008-08-05 |  | 0d |  |  |  | 360h |
| 16 | 7.1 | **DataPost Test Case** | 17d | 2008-07-03 | 2008-07-25 |  | 0d |  |  |  | 144h |
| 17 | 7.1.1 | Develop | 5d | 2008-07-03 | 2008-07-09 | 12 | 0d |  | start no earlier than 2007-09-12 | Bob | 40h |
| 18 | 7.1.2 | Dry Run | 5d | 2008-07-10 | 2008-07-16 | 17 | 0d |  | start no earlier than 2007-09-12 | Bob | 40h |
| 19 | 7.1.3 | Update | 3d | 2008-07-17 | 2008-07-21 | 18 | 0d |  | start no earlier than 2007-09-12 | Bob | 24h |
| 20 | 7.1.4 | Review | 3d | 2008-07-22 | 2008-07-24 | 19 | 44d | 0d | start no earlier than 2007-09-12 | Sonya | 24h |
| 21 | 7.1.5 | Approve | 1d | 2008-07-25 | 2008-07-25 | 20 | 42d |  | start no earlier than 2007-09-12 | Scott; Dal | 16h |
| 22 | 7.1 | **FreeWeigh Interface Test Case** | 11d | 2008-07-22 | 2008-08-05 |  | 0d |  |  |  | 96h |
| 23 | 7.1.1 | Develop | 4d | 2008-07-22 | 2008-07-25 | 19 | 0d |  | start no earlier than 2007-09-12 | Bob | 32h |
| 24 | 7.1.2 | Dry Run | 2d | 2008-07-28 | 2008-07-29 | 23 | 0d |  | start no earlier than 2007-09-12 | Bob | 16h |
| 25 | 7.1.3 | Update | 1d | 2008-07-30 | 2008-07-30 | 24 | 0d |  | start no earlier than 2007-09-12 | Bob | 8h |
| 26 | 7.1.4 | Review | 3d | 2008-07-31 | 2008-08-04 | 25 | 0d |  | start no earlier than 2007-09-12 | Sonya | 24h |
| 27 | 7.1.5 | Approve | 1d | 2008-08-05 | 2008-08-05 | 26 | 0d |  | start no earlier than 2007-09-12 | Scott; Dal | 16h |

| ID | WBS | Task | Duration | Start | Finish | Predecessors | Total slack | Free slack | Constraint | Resources | Work |
| --- | --- | --- | --- | --- | --- | --- | --- | --- | --- | --- | --- |
| 28 | 7.2 | **User Acceptance Testing** | 15d | 2008-07-09 | 2008-07-29 |  | 43d |  |  |  | 120h |
| 29 | 7.2.1 | Develop | 5d | 2008-07-09 | 2008-07-15 | 14 | 43d | 0d | start no earlier than 2007-09-12 | TBD | 40h |
| 30 | 7.2.2 | Dry Run | 4d | 2008-07-16 | 2008-07-21 | 29 | 43d | 0d | start no earlier than 2007-09-12 | TBD | 32h |
| 31 | 7.2.3 | Review | 2d | 2008-07-22 | 2008-07-23 | 30 | 43d | 0d | start no earlier than 2007-09-12 | TBD | 16h |
| 32 | 7.2.4 | Update | 2d | 2008-07-24 | 2008-07-25 | 31 | 43d | 0d | start no earlier than 2007-09-12 | TBD | 16h |
| 33 | 7.2.5 | Approve | 2d | 2008-07-28 | 2008-07-29 | 32 | 43d |  | start no earlier than 2007-09-12 | TBD | 16h |
| 34 | 8 | **Test Plan** | 4d | 2008-08-06 | 2008-08-11 |  | 31d |  |  |  | 48h |
| 35 | 8.1 | Develop | 1d | 2008-08-06 | 2008-08-06 | 27 | 31d | 0d | start no earlier than 2007-09-12 | Sonya | 8h |
| 36 | 8.2 | Review | 1d | 2008-08-07 | 2008-08-07 | 35 | 31d | 0d | start no earlier than 2007-09-12 | Scott; Dal | 16h |
| 37 | 8.3 | Update | 1d | 2008-08-08 | 2008-08-08 | 36 | 31d | 0d | start no earlier than 2007-09-12 | Sonya | 8h |
| 38 | 8.4 | Approve | 1d | 2008-08-11 | 2008-08-11 | 37 | 31d |  | start no earlier than 2007-09-12 | Scott; Dal | 16h |
| 39 | 9 | **Installation Plan** | 4d | 2008-08-06 | 2008-08-11 |  | 0d |  |  |  | 48h |
| 40 | 9.1 | Develop | 2d | 2008-08-06 | 2008-08-07 | 27 | 0d |  | start no earlier than 2007-09-12 | Kit | 16h |
| 41 | 9.2 | Review | 1d | 2008-08-08 | 2008-08-08 | 40 | 0d |  | start no earlier than 2007-09-12 | Sonya; Dal | 16h |
| 42 | 9.3 | Approve | 1d | 2008-08-11 | 2008-08-11 | 41 | 0d |  | start no earlier than 2007-09-12 | Scott; Dal | 16h |
| 43 | 10 | Code Review | 2d | 2008-06-23 | 2008-06-24 | 1 | 68d |  | start no earlier than 2007-09-12 | Jim | 16h |
| 44 | 11 | **Test Install** | 5d | 2008-08-12 | 2008-08-18 |  | 0d |  |  |  | 56h |
| 45 | 11.1 | Install | 1d | 2008-08-12 | 2008-08-12 | 42 | 0d |  | start no earlier than 2007-09-12 | Kit | 8h |
| 46 | 11.3 | Develop Report | 2d | 2008-08-13 | 2008-08-14 | 45 | 0d |  | start no earlier than 2007-09-12 | Kit | 16h |
| 47 | 11.4 | Review | 1d | 2008-08-15 | 2008-08-15 | 46 | 0d |  | start no earlier than 2007-09-12 | Scott; Sonya | 16h |
| 48 | 11.5 | Approve | 1d | 2008-08-18 | 2008-08-18 | 47 | 0d |  | start no earlier than 2007-09-12 | Scott; Dal | 16h |
| 49 | 12 | **Testing** | 11d | 2008-08-19 | 2008-09-02 |  | 0d |  |  |  | 264h |
| 50 | 12.1 | **DataPost Test Case** | 8d | 2008-08-19 | 2008-08-28 |  | 15d |  |  |  | 96h |
| 51 | 12.1.1 | Execute | 3d | 2008-08-19 | 2008-08-21 | 48 | 15d | 0d | start no earlier than 2007-09-12 | Jim | 24h |
| 52 | 12.1.2 | Review | 2d | 2008-08-22 | 2008-08-25 | 51 | 18d | 0d | start no earlier than 2007-09-12 | Scott; Sonya | 32h |
| 53 | 12.1.3 | Re-work | 1d | 2008-08-26 | 2008-08-26 | 52 | 18d | 0d | start no earlier than 2007-09-12 | Bob | 8h |
| 54 | 12.1.4 | Approve | 2d | 2008-08-27 | 2008-08-28 | 53 | 18d |  | start no earlier than 2007-09-12 | Scott; Dal | 32h |

| ID | WBS | Task | Duration | Start | Finish | Predecessors | Total slack | Free slack | Constraint | Resources | Work |
| --- | --- | --- | --- | --- | --- | --- | --- | --- | --- | --- | --- |
| 55 | 12.1 | **FreeWeigh Interface Test Case** | 8d | 2008-08-22 | 2008-09-02 |  | 15d |  |  |  | 96h |
| 56 | 12.1.1 | Execute | 3d | 2008-08-22 | 2008-08-26 | 51 | 15d | 0d | start no earlier than 2007-09-12 | Jim | 24h |
| 57 | 12.1.2 | Review | 2d | 2008-08-27 | 2008-08-28 | 56 | 15d | 0d | start no earlier than 2007-09-12 | Sonya; Scott | 32h |
| 58 | 12.1.3 | Re-work | 1d | 2008-08-29 | 2008-08-29 | 57 | 15d | 0d | start no earlier than 2007-09-12 | Bob | 8h |
| 59 | 12.1.4 | Approve | 2d | 2008-09-01 | 2008-09-02 | 58 | 15d |  | start no earlier than 2007-09-12 | Dal; Scott | 32h |
| 60 | 12.2 | **User Acceptance Testing** | 9d | 2008-08-19 | 2008-08-29 |  | 0d |  |  |  | 72h |
| 61 | 12.2.1 | Execute | 3d | 2008-08-19 | 2008-08-21 | 48 | 0d |  | start no earlier than 2007-09-12 | TBD | 24h |
| 62 | 12.2.2 | Review | 2d | 2008-08-22 | 2008-08-25 | 61 | 0d |  | start no earlier than 2007-09-12 | TBD | 16h |
| 63 | 12.2.3 | Re-work | 2d | 2008-08-26 | 2008-08-27 | 62 | 0d |  | start no earlier than 2007-09-12 | TBD | 16h |
| 64 | 12.2.4 | Approve | 2d | 2008-08-28 | 2008-08-29 | 63 | 17d |  | start no earlier than 2007-09-12 | TBD | 16h |
| 65 | 13 | **Test Report** | 7d | 2008-08-28 | 2008-09-05 |  | 0d |  |  |  | 88h |
| 66 | 13.1 | Develop | 2d | 2008-08-28 | 2008-08-29 | 63 | 0d |  | start no earlier than 2007-09-12 | Sonya | 16h |
| 67 | 13.2 | Review | 3d | 2008-09-01 | 2008-09-03 | 66 | 0d |  | start no earlier than 2007-09-12 | Scott; Sonya | 48h |
| 68 | 13.3 | Update | 1d | 2008-09-04 | 2008-09-04 | 67 | 0d |  | start no earlier than 2007-09-12 | Sonya | 8h |
| 69 | 13.4 | Approve | 1d | 2008-09-05 | 2008-09-05 | 68 | 0d |  | start no earlier than 2007-09-12 | Scott; Dal | 16h |
| 70 | 14 | **VCC Summary** | 8d | 2008-09-08 | 2008-09-17 |  | 0d |  |  |  | 96h |
| 71 | 14.1 | Develop | 3d | 2008-09-08 | 2008-09-10 | 69 | 0d |  | start no earlier than 2007-09-12 | Sonya | 24h |
| 72 | 14.2 | Review | 3d | 2008-09-11 | 2008-09-15 | 71 | 0d |  | start no earlier than 2007-09-12 | Scott; Sonya | 48h |
| 73 | 14.3 | Update | 1d | 2008-09-16 | 2008-09-16 | 72 | 0d |  | start no earlier than 2007-09-12 | Sonya | 8h |
| 74 | 14.4 | Approve | 1d | 2008-09-17 | 2008-09-17 | 73 | 0d |  | start no earlier than 2007-09-12 | Scott; Dal | 16h |
| 75 | 15 | **Production Install** | 4d | 2008-09-18 | 2008-09-23 |  | 0d |  |  |  | 48h |
| 76 | 15.1 | Install | 1d | 2008-09-18 | 2008-09-18 | 74 | 0d |  | start no earlier than 2007-09-12 | Kit | 8h |
| 77 | 15.3 | Develop Report | 1d | 2008-09-19 | 2008-09-19 | 76 | 0d |  | start no earlier than 2007-09-12 | Kit | 8h |
| 78 | 15.4 | Review | 1d | 2008-09-22 | 2008-09-22 | 77 | 0d |  | start no earlier than 2007-09-12 | Scott; Sonya | 16h |
| 79 | 15.5 | Approve | 1d | 2008-09-23 | 2008-09-23 | 78 | 0d |  | start no earlier than 2007-09-12 | Scott; Dal | 16h |
